# Plan-projekta ms

Schedule from MS Project, 2021-10-22 to 2022-01-28.

## Calendars

- Standard: Mon-Fri 08:00-12:00, 13:00-17:00; Sat-Sun off. Exceptions (off unless hours are given): 2021-11-06 08:00-12:00, 13:00-17:00, 2021-11-14 08:00-12:00, 13:00-17:00, 2021-12-04 08:00-12:00, 13:00-17:00, 2021-12-11 08:00-12:00, 13:00-17:00, 2022-01-22 to 2022-01-23 08:00-12:00, 13:00-17:00.

## Resources

| Resource |
| --- |
| Nedzad Nezirović |
| Aldina Avdić |

## Schedule

| ID | WBS | Task | Type | Duration | Start | Finish | Predecessors | Total slack | Free slack | Constraint | Resources | Work |
| --- | --- | --- | --- | --- | --- | --- | --- | --- | --- | --- | --- | --- |
| 1 | 1 | **Ocekivani rezultati** |  | 77d | 2021-10-22 | 2022-01-28 |  | 0d |  |  |  | 344h |
| 3 | 1.1 | Vizija sistema | milestone | 0d | 2021-11-01 | 2021-11-01 | 19 | 70d |  | start no earlier than 2021-11-01 | Nedzad Nezirović; Aldina Avdić |  |
| 4 | 1.2 | Dokument o zahtevima | milestone | 0d | 2021-11-17 | 2021-11-17 | 25 | 56d |  | start no earlier than 2021-11-15 |  |  |
| 5 | 1.3 | Arhitekturni prototip | milestone | 0d | 2021-11-22 | 2021-11-22 | 26 | 53d |  | start no earlier than 2021-11-18 | Aldina Avdić |  |
| 6 | 1.4 | Prototip korisničkog interfejsa | milestone | 0d | 2021-11-26 | 2021-11-26 | 28 | 49d |  | start no earlier than 2021-11-22 |  |  |
| 7 | 1.5 | Arhitekturni projekat | milestone | 0d | 2021-12-06 | 2021-12-06 | 29 | 42d |  | start no earlier than 2021-12-02 |  |  |
| 8 | 1.6 | Detaljni projekat | milestone | 0d | 2021-12-23 | 2021-12-23 | 33 | 28d |  | start no earlier than 2021-12-17 | Nedzad Nezirović |  |
| 9 | 1.7 | Beta verzija | milestone | 0d | 2021-12-28 | 2021-12-28 | 34 | 25d |  | start no earlier than 2021-12-23 | Nedzad Nezirović |  |
| 10 | 1.8 | Plan testiranja | milestone | 0d | 2022-01-03 | 2022-01-03 | 35 | 21d |  | start no earlier than 2021-12-30 | Aldina Avdić |  |
| 11 | 1.9 | Izvestaj o testiranju | milestone | 0d | 2022-01-12 | 2022-01-12 | 41 | 14d |  | start no earlier than 2022-01-10 |  |  |
| 12 | 1.10 | Konacna verzija | milestone | 0d | 2022-01-12 | 2022-01-12 | 38 | 14d |  | finish no earlier than 2022-01-10 |  |  |
| 13 | 1.11 | Korisnicko uputsvo | milestone | 0d | 2022-01-27 | 2022-01-27 | 46 | 1d |  | start no earlier than 2022-01-26 | Nedzad Nezirović |  |
| 14 | 1.12 | Prezentacija proizvoda | milestone | 0d | 2022-01-28 | 2022-01-28 | 44 | 0d |  | start no earlier than 2022-01-28 |  |  |
| 16 | 1.13 | **Faza planiranja projekta** |  | 14d | 2021-10-22 | 2021-11-09 |  | 0d |  |  |  | 16h |
| 17 | 1.13.1 | **Pleriminarna iteracija** |  | 14d | 2021-10-22 | 2021-11-09 |  | 0d |  |  |  | 16h |
| 18 | 1.13.1.1 | Definisanje zahteva |  | 3d | 2021-10-22 | 2021-10-26 |  | 0d |  |  |  |  |
| 19 | 1.13.1.2 | Izrada vizije sistema |  | 4d | 2021-10-27 | 2021-11-01 | 18 | 0d |  |  |  |  |
| 20 | 1.13.1.3 | Modelovanje domena |  | 1d | 2021-11-02 | 2021-11-02 | 19 | 0d |  |  | Aldina Avdić; Nedzad Nezirović | 16h |
| 21 | 1.13.1.4 | Analiza slučajeva korišćenja |  | 6d | 2021-11-03 | 2021-11-09 | 20 | 0d |  |  |  |  |
| 23 | 1.14 | **Faza izrade projekta** |  | 21d | 2021-11-10 | 2021-12-06 | 16 | 0d |  |  |  | 120h |
| 24 | 1.14.1 | **Iteracija R1-Razvoj arhitekturnog prototipa** |  | 21d | 2021-11-10 | 2021-12-06 |  | 0d |  |  |  | 120h |
| 25 | 1.14.1.1 | Izrada dokumenata o zahtevima |  | 7d | 2021-11-10 | 2021-11-17 |  | 14d | 0d |  | Nedzad Nezirović | 56h |
| 26 | 1.14.1.2 | Implementacija arhitekturnog prototipa |  | 10d | 2021-11-10 | 2021-11-22 |  | -1d | 0d |  |  |  |
| 27 | 1.14.1.3 | Testiranje arhitekture |  | 1d | 2021-11-23 | 2021-11-23 | 26 | 0d |  |  | Aldina Avdić | 8h |
| 28 | 1.14.1.4 | Impelmentacija korisnickog interfejsa |  | 3d | 2021-11-24 | 2021-11-26 | 27 | -1d | 0d |  |  |  |
| 29 | 1.14.1.5 | Izrada arhitekturnog projekta |  | 7d | 2021-11-29 | 2021-12-06 | 28 | 0d |  |  | Nedzad Nezirović | 56h |

| ID | WBS | Task | Duration | Start | Finish | Predecessors | Total slack | Free slack | Resources | Work |
| --- | --- | --- | --- | --- | --- | --- | --- | --- | --- | --- |
| 31 | 1.15 | **Faza izrade projekta** | 28d | 2021-12-07 | 2022-01-12 | 23 | 0d |  |  | 152h |
| 32 | 1.15.1 | **Iteracija I1-Razvoj beta verzije** | 23d | 2021-12-07 | 2022-01-05 |  | 0d |  |  | 136h |
| 33 | 1.15.1.1 | Izrada detaljnog projekta | 14d | 2021-12-07 | 2021-12-23 |  | 9d | 0d |  |  |
| 34 | 1.15.1.2 | Implementacija beta verzije | 17d | 2021-12-07 | 2021-12-28 |  | 0d |  | Aldina Avdić | 136h |
| 35 | 1.15.1.3 | Izrada plana testiranja | 4d | 2021-12-29 | 2022-01-03 | 34 | 0d |  |  |  |
| 36 | 1.15.1.4 | Testiranje sistema | 2d | 2022-01-04 | 2022-01-05 | 35 | 0d |  |  |  |
| 37 | 1.15.1.5 | Izrada izveštaja o testiranju | 2d | 2022-01-04 | 2022-01-05 | 35 | 0d |  |  |  |
| 38 | 1.15.2 | **Iteracija I2-Razvoj konacne verzije** | 5d | 2022-01-06 | 2022-01-12 | 32 | 0d |  |  | 16h |
| 39 | 1.15.2.1 | Implementacija konacne verzije | 4d | 2022-01-06 | 2022-01-11 |  | 0d |  |  |  |
| 40 | 1.15.2.2 | Testiranje konacne verzije | 1d | 2022-01-12 | 2022-01-12 | 39 | 0d |  | Aldina Avdić; Nedzad Nezirović | 16h |
| 41 | 1.15.2.3 | Ažuriranje izveštaja o testiranju | 1d | 2022-01-12 | 2022-01-12 | 39 | 0d |  |  |  |
| 43 | 1.16 | **Faza okončanja projekta** | 14d | 2022-01-13 | 2022-01-28 | 38 | 0d |  |  | 56h |
| 44 | 1.16.1 | **Iteracija O1-instalacija sistema** | 14d | 2022-01-13 | 2022-01-28 |  | 0d |  |  | 56h |
| 45 | 1.16.1.1 | Sređivanje projektne dokumentacije | 7d | 2022-01-13 | 2022-01-21 |  | 0d |  |  |  |
| 46 | 1.16.1.2 | Izrada korisničkog uputstva | 6d | 2022-01-22 | 2022-01-27 | 45 | 0d |  | Nedzad Nezirović | 48h |
| 47 | 1.16.1.3 | Instalacija sistema | 1d | 2022-01-28 | 2022-01-28 | 46 | 0d |  | Aldina Avdić | 8h |
